# SDK 4.0.1

Schedule from MS Project, 2008-03-03 to 2008-06-10, A marks actual dates.
NCI

## Calendars

- Standard: Mon-Fri 08:00-12:00, 13:00-17:00; Sat-Sun off.

## Resources

| Resource |
| --- |
| Satish |
| Dan |
| Charles |
| Avinash |
| QA |
| CSM |
| Grid |
| Systems |
| Vijay |

## Schedule

| ID | WBS | Task | Type | Duration | Start | Finish | Predecessors | Complete | Remaining | Total slack | Constraint | Resources | Work | Actual work |
| --- | --- | --- | --- | --- | --- | --- | --- | --- | --- | --- | --- | --- | --- | --- |
| 1 | 1 | **caCORE SDK** |  | 72d | 2008-03-03 A | 2008-06-10 |  | 2% | 70.52d | 0d |  |  | 848h | 25.6h |
| 2 | 1.1 | **Release 4.1** |  | 72d | 2008-03-03 A | 2008-06-10 |  | 2% | 70.52d | 0d |  |  | 848h | 25.6h |
| 3 | 1.1.1 | **Elaboration** |  | 9d | 2008-03-03 A | 2008-03-13 |  | 25% | 6.78d | 0d |  |  | 120h | 25.6h |
| 4 | 1.1.1.5 | NCICB review of task plan and high level items | milestone | 0d | 2008-03-05 A | 2008-03-05 A |  | 100% |  |  | start no earlier than 2008-01-09 | Vijay; Charles; Avinash |  |  |
| 5 | 1.1.1.6 | Revise task plan |  | 0.5d | 2008-03-05 A | 2008-03-05 A | 4 | 100% |  |  |  | Vijay; Charles | 8h | 8h |
| 6 | 1.1.1.7 | **Create scope/requirement document** |  | 8d | 2008-03-03 A | 2008-03-12 |  | 23% | 6.17d | 0d |  |  | 96h | 17.6h |
| 7 | 1.1.1.7.1 | Prepare list of requirements on Gforge |  | 1d | 2008-03-03 A | 2008-03-03 A |  | 100% |  |  |  | Charles | 8h | 8h |
| 8 | 1.1.1.7.2 | Draft scope document |  | 3d | 2008-03-05 A | 2008-03-07 | 7 | 20% | 2.4d | 0d |  | Charles; Vijay | 48h | 9.6h |
| 9 | 1.1.1.7.3 | Prepare risk list |  | 1d | 2008-03-10 | 2008-03-10 | 8 |  |  | 0d |  | Charles | 8h |  |
| 10 | 1.1.1.7.4 | NCICB review of scope document |  | 1d | 2008-03-11 | 2008-03-11 | 9 |  |  | 0d |  | Vijay; Charles; Avinash | 24h |  |
| 11 | 1.1.1.7.5 | Revise scope document |  | 1d | 2008-03-12 | 2008-03-12 | 10 |  |  | 0d |  | Charles | 8h |  |
| 12 | 1.1.1.10 | Revise task plan |  | 1d | 2008-03-13 | 2008-03-13 | 11 |  |  | 0d |  | Vijay; Charles | 16h |  |
| 13 | 1.1.2 | **Construction** |  | 54d | 2008-03-14 | 2008-05-28 |  |  |  | 0d |  |  | 600h |  |
| 14 | 1.1.2.1 | **Iteration 1** |  | 37d | 2008-03-14 | 2008-05-05 |  |  |  | 0d |  |  | 296h |  |
| 15 | 1.1.2.1.1 | **Instance Level** |  | 37d | 2008-03-14 | 2008-05-05 |  |  |  | 0d |  |  | 296h |  |
| 16 | 1.1.2.1.1.1 | **Instance Level Security for Group Level - GF#9286** |  | 15d | 2008-03-14 | 2008-04-03 |  |  |  | 0d |  |  | 120h |  |
| 17 | 1.1.2.1.1.1.1 | Implementation |  | 11d | 2008-03-14 | 2008-03-28 | 12 |  |  | 0d | start no earlier than 2008-03-14 | Vijay | 88h |  |
| 18 | 1.1.2.1.1.1.2 | Develop Junit |  | 2d | 2008-03-31 | 2008-04-01 | 17 |  |  | 0d |  | Vijay | 16h |  |
| 19 | 1.1.2.1.1.1.3 | Fix Defects |  | 2d | 2008-04-02 | 2008-04-03 | 18 |  |  | 0d |  | Vijay | 16h |  |
| 20 | 1.1.2.1.1.2 | **Support Hibernate Annotations - GF# 9290,12232** |  | 6d | 2008-04-04 | 2008-04-11 |  |  |  | 0d |  |  | 48h |  |
| 21 | 1.1.2.1.1.2.1 | Implementation |  | 4d | 2008-04-04 | 2008-04-09 | 19 |  |  | 0d |  | Vijay | 32h |  |
| 22 | 1.1.2.1.1.2.2 | Develop Junit |  | 1d | 2008-04-10 | 2008-04-10 | 21 |  |  | 0d |  | Vijay | 8h |  |
| 23 | 1.1.2.1.1.2.3 | Fix Defects |  | 1d | 2008-04-11 | 2008-04-11 | 22 |  |  | 0d |  | Vijay | 8h |  |
| 24 | 1.1.2.1.1.3 | **MySQL Subselect performance && filters - GF#12231** |  | 15d | 2008-04-14 | 2008-05-02 |  |  |  | 0d |  |  | 120h |  |
| 25 | 1.1.2.1.1.3.1 | Implementation |  | 12d | 2008-04-14 | 2008-04-29 | 23 |  |  | 0d |  | Vijay | 96h |  |
| 26 | 1.1.2.1.1.3.2 | Develop Junit |  | 2d | 2008-04-30 | 2008-05-01 | 25 |  |  | 0d |  | Vijay | 16h |  |
| 27 | 1.1.2.1.1.3.3 | Fix Defects |  | 1d | 2008-05-02 | 2008-05-02 | 26 |  |  | 0d |  | Vijay | 8h |  |

| ID | WBS | Task | Type | Duration | Start | Finish | Predecessors | Total slack | Free slack | Constraint | Resources | Work |
| --- | --- | --- | --- | --- | --- | --- | --- | --- | --- | --- | --- | --- |
| 28 | 1.1.2.1.1.4 | **Instance Level Screen ID Column GF #9292** |  | 1d | 2008-05-05 | 2008-05-05 |  | 0d |  |  |  | 8h |
| 29 | 1.1.2.1.1.4.1 | Modify UPT to display ID Columns |  | 1d | 2008-05-05 | 2008-05-05 | 27 | 0d |  |  | Vijay | 8h |
| 30 | 1.1.2.2 | **Iteration 2** |  | 17d | 2008-05-06 | 2008-05-28 | 29 | 0d |  |  |  | 304h |
| 31 | 1.1.2.2.1 | **CSM API & UPT** |  | 3d | 2008-05-06 | 2008-05-08 |  | 0d |  |  |  |  |
| 32 | 1.1.2.2.1.1 | **General Error Messages GF # 8234** |  | 1d | 2008-05-06 | 2008-05-06 |  | 0d |  |  |  |  |
| 33 | 1.1.2.2.1.1.1 | Fix |  | 1d | 2008-05-06 | 2008-05-06 |  | 0d |  |  |  |  |
| 34 | 1.1.2.2.1.2 | **Not Null Columns in Schema GF # 9288** |  | 1d | 2008-05-07 | 2008-05-07 |  | 0d |  |  |  |  |
| 35 | 1.1.2.2.1.2.1 | Fix |  | 1d | 2008-05-07 | 2008-05-07 | 33 | 0d |  |  |  |  |
| 36 | 1.1.2.2.1.3 | **LDAPHelper fix GForge # 10872** |  | 1d | 2008-05-08 | 2008-05-08 |  | 0d |  |  |  |  |
| 37 | 1.1.2.2.1.3.1 | Fix |  | 1d | 2008-05-08 | 2008-05-08 | 35 | 0d |  |  |  |  |
| 38 | 1.1.1.8 | **QA Activities** |  | 17d | 2008-05-06 | 2008-05-28 |  | 3d |  |  |  | 304h |
| 39 | 1.1.1.8.1 | Prepare test plan/test cases |  | 10d | 2008-05-06 | 2008-05-19 | 6 | 9d | 0d |  | QA | 80h |
| 40 | 1.1.1.8.2 | Review existing test cases/test cases |  | 2d | 2008-05-20 | 2008-05-21 | 39 | 9d | 0d |  | QA | 16h |
| 41 | 1.1.1.8.3 | Review new test plan/test cases |  | 2d | 2008-05-22 | 2008-05-23 | 40 | 9d | 0d |  | QA | 16h |
| 42 | 1.1.1.8.4 | Revise test plan/test cases |  | 3d | 2008-05-26 | 2008-05-28 | 41 | 9d |  |  | QA | 24h |
| 43 | 1.1.2.2.2.5 | Test execution |  | 7d | 2008-05-09 | 2008-05-19 | 31 | 16d |  |  | QA | 56h |
| 44 | 1.1.2.2.2.6 | Test support/Fix defects |  | 14d | 2008-05-09 | 2008-05-28 | 31 | 0d |  | start no earlier than 2008-03-07 | Vijay | 112h |
| 45 | 1.1.3 | **Transition** |  | 9d | 2008-05-29 | 2008-06-10 |  | 0d |  |  |  | 128h |
| 46 | 1.1.2.1.4.2 | Update database scripts |  | 1d | 2008-05-29 | 2008-05-29 | 44 | 3d | 0d |  | Vijay | 8h |
| 47 | 1.1.2.1.4.3 | QA database scripts |  | 1d | 2008-05-30 | 2008-05-30 | 46 | 7d |  |  | QA | 8h |
| 48 | 1.1.3.3 | Update documentation |  | 5d | 2008-05-30 | 2008-06-05 | 46 | 3d |  |  | Vijay | 40h |
| 49 | 1.1.3.1 | Create release packaging |  | 1d | 2008-05-29 | 2008-05-29 | 44 | 0d |  |  | Vijay | 8h |
| 50 | 1.1.3.2 | QA release packaging |  | 1d | 2008-05-30 | 2008-05-30 | 49 | 0d |  |  | QA | 8h |
| 51 | 1.1.3.4 | Prepare release notes |  | 1d | 2008-06-02 | 2008-06-02 | 50 | 0d |  |  | Vijay | 8h |
| 52 | 1.1.3.5 | Update zope website |  | 1d | 2008-06-03 | 2008-06-03 | 51 | 0d |  |  | Vijay | 8h |
| 53 | 1.1.3.6 | Push to production |  | 5d | 2008-06-04 | 2008-06-10 | 52 | 0d |  |  | Systems | 40h |
| 54 | 1.1.4 | 4.1 release complete | milestone | 0d | 2008-06-10 | 2008-06-10 | 53 | 0d |  |  |  |  |
