# CSM Post Release

Schedule from MS Project, 2005-08-01 to 2005-09-19, A marks actual dates.
NCI

## Calendars

- Standard: Mon-Fri 08:00-12:00, 13:00-17:00; Sat-Sun off.

## Resources

| Resource |
| --- |
| Vinay |
| Kunal |
| Charles |
| Eric |
| Avinash |

## Schedule

| ID | WBS | Task | Type | Duration | Start | Finish | Predecessors | Complete | Remaining | Total slack | Constraint | Resources | Work | Actual work |
| --- | --- | --- | --- | --- | --- | --- | --- | --- | --- | --- | --- | --- | --- | --- |
| 1 | 1 | **CSM Post Release** |  | 35.25d | 2005-08-01 A | 2005-09-19 |  | 26% | 26.04d | 0d |  |  | 815.96h | 242h |
| 2 | 1.1 | **Production Support** |  | 22d | 2005-08-01 | 2005-08-30 |  |  |  | 13.25d |  |  | 132h |  |
| 3 | 1.1.1 | Support Activities |  | 22d | 2005-08-01 | 2005-08-30 |  |  |  | 11.25d |  | Vinay [25%]; Kunal [25%]; Eric [25%] | 132h |  |
| 4 | 1.2 | **Meetings** |  | 3.2d | 2005-08-01 A | 2005-08-04 |  | 80% | 0.64d | 32.05d |  |  | 12.8h | 9.6h |
| 5 | 1.2.1 | Status Meeting |  | 0.1d | 2005-08-01 | 2005-08-01 |  |  |  | 21.9d |  | Vinay; Kunal; Charles; Eric | 3.2h |  |
| 6 | 1.2.2 | IBM |  | 0.2d | 2005-08-01 A | 2005-08-01 A |  | 100% |  |  |  | Vinay; Kunal; Charles | 4.8h | 4.8h |
| 7 | 1.2.3 | IBM |  | 0.2d | 2005-08-04 A | 2005-08-04 A |  | 100% |  |  | start no earlier than 2005-08-04 | Vinay; Kunal; Charles | 4.8h | 4.8h |
| 8 | 1.3 | Post Release Analysis |  | 1d | 2005-08-11 | 2005-08-11 |  |  |  | 26.25d | start no earlier than 2005-08-11 | Kunal [25%]; Vinay [75%]; Eric [75%] | 14h |  |
| 9 | 1.4 | **Presentations/Conferences** |  | 15d | 2005-08-01 A | 2005-08-19 A |  | 100% |  |  |  |  | 184.4h | 184.4h |
| 10 | 1.4.1 | **Preparation** |  | 10d | 2005-08-01 A | 2005-08-12 A |  | 100% |  |  |  |  | 82.4h | 82.4h |
| 11 | 1.4.1.1 | Developer's Boot Camp Presentation |  | 3d | 2005-08-01 A | 2005-08-03 A |  | 100% |  |  |  | Kunal [25%]; Vinay [75%]; Eric [75%] | 22h | 22h |
| 12 | 1.4.1.2 | caCore Architecture Meeting |  | 2d | 2005-08-04 A | 2005-08-05 A | 11 | 100% |  |  |  | Kunal [25%]; Vinay [75%]; Eric [75%] | 28h | 28h |
| 13 | 1.4.1.3 | Review |  | 0.3d | 2005-08-09 A | 2005-08-09 A |  | 100% |  |  | start no earlier than 2005-08-09 | Kunal [75%]; Vinay [75%]; Eric [75%] | 5.4h | 5.4h |
| 14 | 1.4.1.4 | Update |  | 2.5d | 2005-08-09 A | 2005-08-11 A | 13 | 100% |  |  |  | Eric [75%] | 15h | 15h |
| 15 | 1.4.1.5 | Installation Test |  | 1d | 2005-08-12 A | 2005-08-12 A |  | 100% |  |  | start no earlier than 2005-08-12 | Vinay [75%]; Kunal [75%] | 12h | 12h |
| 16 | 1.4.2 | Developer Boot Camp Presentation (NCICB) |  | 1d | 2005-08-15 A | 2005-08-15 A | 10 | 100% |  |  |  | Vinay [75%]; Kunal [75%] | 12h | 12h |
| 17 | 1.4.3 | caBig Architecture F2F |  | 3d | 2005-08-16 A | 2005-08-18 A | 16 | 100% |  |  |  | Vinay [75%]; Kunal [75%]; Eric [75%] | 54h | 54h |
| 18 | 1.4.4 | Developer Boot Camp |  | 2d | 2005-08-18 A | 2005-08-19 A |  | 100% |  |  | start no earlier than 2005-08-18 | Vinay [75%]; Kunal [75%]; Eric [75%] | 36h | 36h |
| 19 | 1.5 | **Best Practices** |  | 3d | 2005-08-08 A | 2005-08-11 A |  | 100% |  |  |  |  | 18h | 18h |
| 20 | 1.5.1 | Create SOP Documents |  | 3d | 2005-08-08 A | 2005-08-11 A | 13FS-1d | 100% |  |  |  | Vinay [75%] | 18h | 18h |
| 21 | 1.6 | SDK Defect Fix/Documentation Update |  | 3d | 2005-08-03 A | 2005-08-05 A |  | 100% |  |  | finish no earlier than 2005-08-08 | Kunal [50%] | 18h | 18h |
| 22 | 1.7 | SdK Testing/Documentation Update |  | 5d | 2005-08-08 | 2005-08-12 | 21 |  |  | 25.25d |  | Kunal [50%]; Eric [50%] | 21.33h |  |
| 23 | 1.8 | Production | milestone | 0d | 2005-08-25 | 2005-08-25 |  |  |  | 17.25d | start no earlier than 2005-08-25 | Kunal |  |  |
| 24 | 1.9 | **Open Source Initiative** |  | 4d | 2005-08-22 A | 2005-08-25 |  | 25% | 3d | 16.25d |  |  | 24h | 6h |
| 25 | 1.9.1 | Define Approach |  | 1d | 2005-08-22 A | 2005-08-22 A | 18 | 100% |  |  |  | Kunal [75%] | 6h | 6h |
| 26 | 1.9.2 | List OS Items for Development |  | 3d | 2005-08-23 | 2005-08-25 | 25 |  |  | 16.25d |  | Kunal [75%] | 18h |  |

| ID | WBS | Task | Type | Duration | Start | Finish | Predecessors | Complete | Total slack | Free slack | Constraint | Resources | Work | Actual work |
| --- | --- | --- | --- | --- | --- | --- | --- | --- | --- | --- | --- | --- | --- | --- |
| 27 | 1.10 | **Reference Implementation** |  | 1d | 2005-08-02 A | 2005-08-02 A |  | 100% |  |  |  |  | 6h | 6h |
| 28 | 1.10.1 | WrapUp Work |  | 1d | 2005-08-02 A | 2005-08-02 A |  | 100% |  |  | start no earlier than 2005-08-02 | Kunal [75%] | 6h | 6h |
| 29 | 1.11 | **Requirement Gathering/Scope** |  | 18.25d | 2005-08-22 | 2005-09-15 | 9 |  | 0d |  |  |  | 308.5h |  |
| 30 | 1.11.1 | Gather/Writeup Requirements |  | 7d | 2005-08-22 | 2005-08-30 |  |  | 0d |  |  | Vinay [75%]; Kunal [75%]; Eric [75%] | 126h |  |
| 31 | 1.11.2 | Internal Review/Updates |  | 2d | 2005-08-31 | 2005-09-01 | 30 |  | 0d |  |  | Vinay [75%]; Kunal [75%]; Eric [75%] | 36h |  |
| 32 | 1.11.3 | Estimation |  | 5d | 2005-09-02 | 2005-09-08 | 31 |  | 0d |  |  | Vinay [75%]; Kunal [75%]; Eric [75%] | 90h |  |
| 33 | 1.11.4 | Requirements Prioritization |  | 0.25d | 2005-09-09 | 2005-09-09 | 32 |  | 0d |  |  | Avinash; Vinay [75%]; Kunal [75%]; Charles; Eric [75%] | 8.5h |  |
| 34 | 1.11.5 | Scope Document Development |  | 4d | 2005-09-09 | 2005-09-15 | 33 |  | 2d | 0d |  | Vinay [50%]; Kunal [50%]; Eric [50%] | 48h |  |
| 35 | 1.11.6 | Scope Document SignOff | milestone | 0d | 2005-09-15 | 2005-09-15 | 34 |  | 2d |  |  | Avinash; Charles; Vinay |  |  |
| 36 | 1.12 | **Planning** |  | 17.25d | 2005-08-25 | 2005-09-19 |  |  | 0d |  |  |  | 76.93h |  |
| 37 | 1.12.1 | Project Plan |  | 10d | 2005-08-25 | 2005-09-07 |  |  | 7.05d | 0d | start no earlier than 2005-08-25 | Charles [10%] | 8h |  |
| 38 | 1.12.2 | Project Plan Review |  | 0.2d | 2005-09-08 | 2005-09-08 | 37 |  | 7.05d |  |  | Charles; Avinash; Vinay | 4.8h |  |
| 39 | 1.12.3 | Task Plan |  | 5d | 2005-09-09 | 2005-09-16 | 33 |  | 0d |  |  | Charles [10%]; Vinay [25%]; Kunal [25%]; Eric [25%] | 30.13h |  |
| 40 | 1.12.4 | Task Plan Review |  | 1d | 2005-09-16 | 2005-09-19 | 39 |  | 0d |  |  | Avinash; Vinay [75%]; Kunal [75%]; Charles; Eric [75%] | 34h |  |
| 41 | 1.12.5 | Task Plan SignOff | milestone | 0d | 2005-09-19 | 2005-09-19 | 40 |  | 0d |  |  | Avinash; Charles |  |  |
| 42 | 1.12.6 | Project Plan SignOff | milestone | 0d | 2005-09-19 | 2005-09-19 | 41 |  | 0d |  |  | Avinash; Charles |  |  |
